Schedule from MS Project, 2023-09-14 to 2023-10-31, costs in $, A marks actual dates.

## Calendars

- Estándar: Mon-Fri 09:00-13:00, 15:00-19:00; Sat-Sun off. Exceptions (off unless hours are given): 2023-10-16 (Dia de la Diversidad Cultural).

## Resources

| Resource | Rate | Cost per use |
| --- | --- | --- |
| Computadoras |  | 1020000 |
| Materiales electricos |  | 40000 |
| Materiales de limpieza |  | 6000 |
| Ingeniero de Sistemas |  | 787162 |
| Electricista |  | 12000 |
| Tecnico informatico | 4000 |  |
| Programador Junior | 16840 |  |
| Programador Senior | 18841 |  |
| Diseñador de Interfaces | 11378 |  |
| Ingeniero de pruebas | 13834 |  |
| Analista en sistemas | 15173 |  |
| Administrador de BD | 15173 |  |
| Servicio de limpieza | 1300 |  |
| Capacitador | 4298 |  |
| Tecnico Informatico 2 | 5000 |  |

## Schedule

| ID | WBS | Task | Type | Duration | Start | Finish | Predecessors | Complete | Remaining | Baseline start | Baseline finish | Baseline duration | Total slack | Free slack | Resources | Work | Actual work | Cost | Baseline cost | Actual cost |
| --- | --- | --- | --- | --- | --- | --- | --- | --- | --- | --- | --- | --- | --- | --- | --- | --- | --- | --- | --- | --- |
| 1 | 1 | **Sistema de gestion de turnos y pacientes para la SAP** |  | 32.75d | 2023-09-14 A | 2023-10-31 |  | 62% | 12.34d | 2023-09-14 | 2023-10-31 | 32.5d | 0d |  | Ingeniero de Sistemas | 774h | 459.25h | 7,100,471.33 | 6,844,063.33 | 5,776,727.06 |
| 2 | 1.1 | **Investigación preliminar** |  | 19.25d | 2023-09-14 A | 2023-10-11 |  | 66% | 6.49d | 2023-09-14 | 2023-10-10 | 18.25d | 10.5d |  |  | 166h | 110h | 1,602,228 | 1,480,844 | 1,602,228 |
| 3 | 1.1.1 | **Verificación de instalaciones** |  | 1.5d | 2023-09-14 A | 2023-09-15 A |  | 100% |  | 2023-09-14 | 2023-09-15 | 1.5d |  |  | Electricista | 12h | 12h | 12,000 | 12,000 | 12,000 |
| 4 | 1.1.1.1 | Verificar el estado de las instalaciones electricas. |  | 0.5d | 2023-09-14 A | 2023-09-14 A |  | 100% |  | 2023-09-14 | 2023-09-14 | 0.5d |  |  |  |  |  |  |  |  |
| 5 | 1.1.1.2 | Investigar recursos para el reacondicionamiento electrico del sitio. |  | 1d | 2023-09-14 A | 2023-09-15 A | 4 | 100% |  | 2023-09-14 | 2023-09-15 | 1d |  |  |  |  |  |  |  |  |
| 6 | 1.1.1.3 | Verificación de instalaciones finalizada. | milestone | 0d | 2023-09-15 A | 2023-09-15 A | 5 | 100% |  | 2023-09-15 | 2023-09-15 | 0d |  |  |  |  |  |  |  |  |
| 7 | 1.1.2 | **Entrevistas** |  | 1.5d | 2023-09-14 A | 2023-09-15 A |  | 100% |  | 2023-09-14 | 2023-09-14 | 0.5d |  |  |  | 12h | 12h | 182,076 | 60,692 | 182,076 |
| 8 | 1.1.2.1 | Realizar entrevista al jefe |  | 0.25d | 2023-09-14 A | 2023-09-14 A |  | 100% |  | 2023-09-14 | 2023-09-14 | 0.25d |  |  | Analista en sistemas | 2h | 2h | 30,346 | 30,346 | 30,346 |
| 9 | 1.1.2.2 | Realizar entrevista a las recepcionistas |  | 1.25d | 2023-09-14 A | 2023-09-15 A | 8 | 100% |  | 2023-09-14 | 2023-09-14 | 0.25d |  |  | Analista en sistemas | 10h | 10h | 151,730 | 30,346 | 151,730 |
| 10 | 1.1.2.3 | Entrevistas finalizadas. | milestone | 0d | 2023-09-15 A | 2023-09-15 A | 9 | 100% |  | 2023-09-14 | 2023-09-14 | 0d |  |  |  |  |  |  |  |  |
| 11 | 1.1.3 | Elaborar Especificación de Requisitos de Usuario (ERS) |  | 3d | 2023-09-15 A | 2023-09-20 A | 10 | 100% |  | 2023-09-14 | 2023-09-19 | 3d |  |  | Analista en sistemas | 24h | 24h | 364,152 | 364,152 | 364,152 |
| 12 | 1.1.4 | Verificar el estado de los equipos actuales (computadoras). |  | 0.5d | 2023-09-20 A | 2023-09-20 A | 11 | 100% |  | 2023-09-19 | 2023-09-19 | 0.5d |  |  | Tecnico informatico | 4h | 4h | 16,000 | 16,000 | 16,000 |
| 13 | 1.1.5 | Realizar pedido de computadoras nuevas a la Subsecretaría de Salud. |  | 0.25d | 2023-09-21 A | 2023-09-21 A | 12 | 100% |  | 2023-09-20 | 2023-09-20 | 0.25d |  |  | Tecnico informatico | 2h | 2h | 8,000 | 8,000 | 8,000 |
| 14 | 1.1.6 | Recibir pedido de computadoras. |  | 14d | 2023-09-21 A | 2023-10-11 | 13 | 50% | 7d | 2023-09-20 | 2023-10-10 | 14d | 10.5d | 0d | Computadoras | 112h | 56h | 1,020,000 | 1,020,000 | 1,020,000 |
| 15 | 1.1.7 | Investigación preliminar realizada. | milestone | 0d | 2023-10-11 | 2023-10-11 | 14 |  |  | 2023-10-10 | 2023-10-10 | 0d | 10d |  |  |  |  |  |  |  |
| 16 | 1.2 | **Desarrollo** |  | 28.25d | 2023-09-20 A | 2023-10-31 |  | 61% | 11.15d | 2023-09-19 | 2023-10-31 | 29d | 0d |  |  | 346h | 196h | 4,379,828 | 4,244,804 | 3,181,960 |
| 17 | 1.2.1 | **Base de datos** |  | 8d | 2023-09-20 A | 2023-10-02 A |  | 100% |  | 2023-09-19 | 2023-10-02 | 9.5d |  |  |  | 72h | 72h | 1,105,792 | 1,119,128 | 1,105,792 |
| 18 | 1.2.1.1 | Recopilar informacion de las planillas de Excel |  | 1d | 2023-09-20 A | 2023-09-21 A | 11 | 100% |  | 2023-09-19 | 2023-09-20 | 1d |  |  | Programador Junior | 8h | 8h | 134,720 | 134,720 | 134,720 |
| 19 | 1.2.1.2 | Realizar el modelo entidad relación de la base de datos para turnos y pacientes. |  | 2d | 2023-09-20 A | 2023-09-22 A | 11 | 100% |  | 2023-09-19 | 2023-09-21 | 2d |  |  | Administrador de BD | 16h | 16h | 242,768 | 242,768 | 242,768 |
| 20 | 1.2.1.3 | Realizar modelo relacional de la BD. |  | 1d | 2023-09-22 A | 2023-09-25 A | 19 | 100% |  | 2023-09-21 | 2023-09-22 | 1d |  |  | Administrador de BD | 8h | 8h | 121,384 | 121,384 | 121,384 |
| 21 | 1.2.1.4 | Desarrollar la base de datos. |  | 4d | 2023-09-25 A | 2023-09-29 A | 20 | 100% |  | 2023-09-22 | 2023-09-28 | 4d |  |  | Administrador de BD | 32h | 32h | 485,536 | 485,536 | 485,536 |
| 22 | 1.2.1.5 | Importar datos a la BD |  | 0.5d | 2023-09-29 A | 2023-09-29 A | 18, 21 | 100% |  | 2023-10-02 | 2023-10-02 | 0.5d |  |  | Administrador de BD | 4h | 4h | 60,692 | 67,360 | 60,692 |
| 23 | 1.2.1.6 | Desplegar la base de datos. |  | 0.5d | 2023-10-02 A | 2023-10-02 A | 22 | 100% |  | 2023-10-02 | 2023-10-02 | 0.5d |  |  | Administrador de BD | 4h | 4h | 60,692 | 67,360 | 60,692 |
| 24 | 1.2.1.7 | Base de datos desplegada. | milestone | 0d | 2023-10-02 A | 2023-10-02 A | 23 | 100% |  | 2023-10-02 | 2023-10-02 | 0d |  |  |  |  |  |  |  |  |

| ID | WBS | Task | Type | Duration | Start | Finish | Predecessors | Complete | Remaining | Baseline start | Baseline finish | Baseline duration | Total slack | Free slack | Resources | Work | Actual work | Cost | Baseline cost | Actual cost |
| --- | --- | --- | --- | --- | --- | --- | --- | --- | --- | --- | --- | --- | --- | --- | --- | --- | --- | --- | --- | --- |
| 25 | 1.2.2 | **Interfaz de usuario** |  | 8.25d | 2023-09-20 A | 2023-10-02 A |  | 100% |  | 2023-09-19 | 2023-09-28 | 7.25d |  |  |  | 66h | 66h | 1,049,468 | 958,444 | 1,049,468 |
| 26 | 1.2.2.1 | Diseñar boceto de interfaz del programa que será usado por el personal de recepción. |  | 2d | 2023-09-20 A | 2023-09-22 A | 11 | 100% |  | 2023-09-19 | 2023-09-21 | 2d |  |  | Diseñador de Interfaces | 16h | 16h | 182,048 | 182,048 | 182,048 |
| 27 | 1.2.2.2 | Presentar boceto al personal de recepción. |  | 1.25d | 2023-09-22 A | 2023-09-25 A | 26 | 100% |  | 2023-09-21 | 2023-09-21 | 0.25d |  |  | Diseñador de Interfaces | 10h | 10h | 113,780 | 22,756 | 113,780 |
| 28 | 1.2.2.3 | Desarrollar interfaz. |  | 5d | 2023-09-25 A | 2023-10-02 A | 27 | 100% |  | 2023-09-21 | 2023-09-28 | 5d |  |  | Programador Senior | 40h | 40h | 753,640 | 753,640 | 753,640 |
| 29 | 1.2.2.4 | Interfaz de usuario realizada. | milestone | 0d | 2023-10-02 A | 2023-10-02 A | 28 | 100% |  | 2023-09-28 | 2023-09-28 | 0d |  |  |  |  |  |  |  |  |
| 30 | 1.2.3 | **Aplicación** |  | 8d | 2023-10-02 A | 2023-10-12 |  | 50% | 4d | 2023-10-03 | 2023-10-12 | 8d | 1d |  |  | 64h | 32h | 1,205,824 | 1,205,824 | 602,912 |
| 31 | 1.2.3.1 | Realizar diagrama de clases. |  | 1d | 2023-10-02 A | 2023-10-03 | 29, 24 | 50% | 0.5d | 2023-10-03 | 2023-10-03 | 1d | 3.5d | 0d | Programador Senior | 8h | 4h | 150,728 | 150,728 | 75,364 |
| 32 | 1.2.3.2 | Desarrollar el módulo de turnos de la aplicación. |  | 7d | 2023-10-03 A | 2023-10-12 | 31 | 50% | 3.5d | 2023-10-04 | 2023-10-12 | 7d | 1d | 0d | Programador Senior [50%] | 28h | 14h | 527,548 | 527,548 | 263,774 |
| 33 | 1.2.3.3 | Desarrollar el módulo de pacientes de la aplicación. |  | 7d | 2023-10-03 A | 2023-10-12 | 31 | 50% | 3.5d | 2023-10-04 | 2023-10-12 | 7d | 1d | 0d | Programador Senior [50%] | 28h | 14h | 527,548 | 527,548 | 263,774 |
| 34 | 1.2.3.4 | Aplicación desarrollada. | milestone | 0d | 2023-10-12 A | 2023-10-12 | 33, 32 | 50% | 0d | 2023-10-12 | 2023-10-12 | 0d | 1d | 0d |  |  |  |  |  |  |
| 35 | 1.2.4 | **Integración** |  | 4.5d | 2023-10-12 A | 2023-10-20 |  | 50% | 2.25d | 2023-10-13 | 2023-10-19 | 4d | 0d |  |  | 52h | 26h | 847,576 | 792,240 | 423,788 |
| 36 | 1.2.4.1 | Integrar capas del sistema. |  | 2d | 2023-10-12 A | 2023-10-17 | 34 | 50% | 1d | 2023-10-13 | 2023-10-17 | 2d | 1d | 0d | Programador Senior | 16h | 8h | 301,456 | 301,456 | 150,728 |
| 37 | 1.2.4.2 | Realizar pruebas al sistema. |  | 2.5d | 2023-10-17 A | 2023-10-20 | 36 | 50% | 1.25d | 2023-10-18 | 2023-10-19 | 2d | 0d |  | Ingeniero de pruebas | 20h | 10h | 276,680 | 221,344 | 138,340 |
| 38 | 1.2.4.3 | Realizar manual de usuario de la aplicación. |  | 2d | 2023-10-17 A | 2023-10-19 | 36 | 50% | 1d | 2023-10-18 | 2023-10-19 | 2d | 0.5d |  | Programador Junior | 16h | 8h | 269,440 | 269,440 | 134,720 |
| 39 | 1.2.4.4 | Integración finalizada. | milestone | 0d | 2023-10-20 A | 2023-10-20 | 38, 37 | 50% | 0d | 2023-10-19 | 2023-10-19 | 0d | 0d |  |  |  |  |  |  |  |
| 40 | 1.2.5 | **Despliegue** |  | 7.5d | 2023-10-20 | 2023-10-31 |  |  |  | 2023-10-20 | 2023-10-31 | 7.5d | 0d |  |  | 92h |  | 171,168 | 169,168 |  |
| 41 | 1.2.5.1 | **Reacondicionamiento** |  | 4.5d | 2023-10-20 | 2023-10-26 |  |  |  | 2023-10-20 | 2023-10-26 | 4.5d | 0d |  |  | 68h |  | 68,400 | 68,400 |  |
| 42 | 1.2.5.1.1 | **Reacondicionamiento electrico** |  | 3.5d | 2023-10-20 | 2023-10-25 |  |  |  | 2023-10-20 | 2023-10-25 | 3.5d | 0d |  | Electricista | 52h |  | 52,000 | 52,000 |  |
| 43 | 1.2.5.1.1.1 | Realizar presupuesto de recursos para el reacondicionamiento eléctrico del sitio (cableado y limpieza). |  | 0.5d | 2023-10-20 | 2023-10-20 | 39, 6 |  |  | 2023-10-20 | 2023-10-20 | 0.5d | 0d |  |  |  |  |  |  |  |
| 44 | 1.2.5.1.1.2 | Reacondicionar el lugar. |  | 3d | 2023-10-20 | 2023-10-25 | 43 |  |  | 2023-10-20 | 2023-10-25 | 3d | 0d |  | Materiales electricos | 24h |  | 40,000 | 40,000 |  |
| 45 | 1.2.5.1.1.3 | Reacondicionamiento electrico finalizado | milestone | 0d | 2023-10-25 | 2023-10-25 | 44 |  |  | 2023-10-25 | 2023-10-25 | 0d | 0d |  |  |  |  |  |  |  |
| 46 | 1.2.5.1.2 | Realizar limpieza del lugar |  | 1d | 2023-10-25 | 2023-10-26 | 45 |  |  | 2023-10-25 | 2023-10-26 | 1d | 0d |  | Materiales de limpieza; Servicio de limpieza | 16h |  | 16,400 | 16,400 |  |
| 47 | 1.2.5.1.3 | Reacondicionamiento finalizado | milestone | 0d | 2023-10-26 | 2023-10-26 | 46 |  |  | 2023-10-26 | 2023-10-26 | 0d | 0d |  |  |  |  |  |  |  |
| 48 | 1.2.5.2 | **Instalación** |  | 3d | 2023-10-26 | 2023-10-31 |  |  |  | 2023-10-26 | 2023-10-31 | 3d | 0d |  |  | 24h |  | 102,768 | 100,768 |  |
| 49 | 1.2.5.2.1 | Instalar las nuevas computadoras en el área de recepción. |  | 0.75d | 2023-10-26 | 2023-10-27 | 15, 47 |  |  | 2023-10-26 | 2023-10-27 | 0.75d | 0d |  | Tecnico informatico | 6h |  | 24,000 | 24,000 |  |
| 50 | 1.2.5.2.2 | Instalar el sistema en las computadoras nuevas. |  | 0.25d | 2023-10-27 | 2023-10-27 | 49 |  |  | 2023-10-27 | 2023-10-27 | 0.25d | 0d |  | Tecnico Informatico 2 | 2h |  | 10,000 | 8,000 |  |
| 51 | 1.2.5.2.3 | Capacitar al personal de recepción. |  | 2d | 2023-10-27 | 2023-10-31 | 50 |  |  | 2023-10-27 | 2023-10-31 | 2d | 0d |  | Capacitador | 16h |  | 68,768 | 68,768 |  |
| 52 | 1.2.5.2.4 | Instalación finalizada. | milestone | 0d | 2023-10-31 | 2023-10-31 | 51 |  |  | 2023-10-31 | 2023-10-31 | 0d | 0d |  |  |  |  |  |  |  |
| 53 | 1.2.5.3 | Sistema desplegado. | milestone | 0d | 2023-10-31 | 2023-10-31 | 52 |  |  | 2023-10-31 | 2023-10-31 | 0d | 0d |  |  |  |  |  |  |  |
| 54 | 1.2.6 | Desarrollo finalizado. | milestone | 0d | 2023-10-31 | 2023-10-31 | 53 |  |  | 2023-10-31 | 2023-10-31 | 0d | 0d |  |  |  |  |  |  |  |
| 55 | 2 | Sistema de gestión implementado. | milestone | 0d | 2023-10-31 | 2023-10-31 | 54 |  |  | 2023-10-31 | 2023-10-31 | 0d | 0d |  |  |  |  |  |  |  |
